Schedule from MS Project, 2011-11-09 to 2012-02-20.
鍖椾含鎭掑崕

## Calendars

- 标准: Mon-Fri 08:00-12:00, 13:00-17:00; Sat-Sun off.

## Resources

| Resource |
| --- |
| 成七一 |
| 张见喜 |
| 钟斌 |

## Schedule

| ID | WBS | Task | Duration | Start | Finish | Predecessors | Total slack | Free slack | Resources | Work |
| --- | --- | --- | --- | --- | --- | --- | --- | --- | --- | --- |
| 1 | 1 | **项目开发计划** | 74d | 2011-11-09 | 2012-02-20 |  | 0d |  |  | 1004h |
| 2 | 1.1 | **需求阶段** | 10d | 2011-11-09 | 2011-11-22 |  | 0d |  |  | 168h |
| 3 | 1.1.1 | 需求调研 | 1d | 2011-11-09 | 2011-11-09 |  | 0d |  | 成七一 | 8h |
| 4 | 1.1.2 | **需求分析** | 8d | 2011-11-10 | 2011-11-21 | 3 | 0d |  |  | 128h |
| 5 | 1.1.2.1 | 界面原型设计 | 3d | 2011-11-10 | 2011-11-14 |  | 0d |  | 成七一; 钟斌 | 48h |
| 6 | 1.1.2.2 | 业务规则分析 | 2d | 2011-11-15 | 2011-11-16 | 5 | 0d |  | 成七一; 钟斌 | 32h |
| 7 | 1.1.2.3 | 业务数据项分析 | 2d | 2011-11-17 | 2011-11-18 | 6 | 0d |  | 成七一; 钟斌 | 32h |
| 8 | 1.1.2.4 | 非功能性需求分析 | 1d | 2011-11-21 | 2011-11-21 | 7 | 0d |  | 成七一; 钟斌 | 16h |
| 9 | 1.1.3 | **需求确认** | 1d | 2011-11-22 | 2011-11-22 | 4 | 0d |  |  | 32h |
| 10 | 1.1.3.1 | 需求范围确认 | 1d | 2011-11-22 | 2011-11-22 |  | 0d |  | 成七一 | 8h |
| 11 | 1.1.3.2 | 界面原型确认 | 1d | 2011-11-22 | 2011-11-22 |  | 0d |  | 成七一 | 8h |
| 12 | 1.1.3.3 | 业务规则及数据项确认 | 1d | 2011-11-22 | 2011-11-22 |  | 0d |  | 成七一 | 8h |
| 13 | 1.1.3.4 | 非功能性需求确认 | 1d | 2011-11-22 | 2011-11-22 |  | 0d |  | 成七一 | 8h |
| 14 | 1.2 | **设计阶段** | 12d | 2011-11-23 | 2011-12-08 | 2 | 0d |  |  | 96h |
| 15 | 1.2.1 | 界面交互设计 | 3d | 2011-11-23 | 2011-11-25 |  | 0d |  | 成七一 | 24h |
| 16 | 1.2.2 | 系统体系结构设计 | 4d | 2011-11-28 | 2011-12-01 | 15 | 0d |  | 成七一 | 32h |
| 17 | 1.2.3 | 数据结构设计 | 3d | 2011-12-02 | 2011-12-06 | 16 | 0d |  | 成七一 | 24h |
| 18 | 1.2.4 | 测试用例设计 | 2d | 2011-12-07 | 2011-12-08 | 17 | 0d |  | 成七一 | 16h |
| 19 | 1.3 | **开发阶段** | 25d | 2011-12-09 | 2012-01-12 | 14 | 0d |  |  | 344h |
| 20 | 1.3.1 | 开发环境搭建 | 2d | 2011-12-09 | 2011-12-12 |  | 0d |  | 成七一 | 16h |
| 21 | 1.3.2 | **v1.0版本功能开发** | 14d | 2011-12-13 | 2011-12-30 |  | 0d |  |  | 176h |
| 22 | 1.3.2.1 | **系统管理功能开发** | 5d | 2011-12-13 | 2011-12-19 | 20 | 0d |  |  | 40h |
| 23 | 1.3.2.1.1 | 登录功能 | 2d | 2011-12-13 | 2011-12-14 |  | 0d |  | 钟斌 | 16h |
| 24 | 1.3.2.1.2 | 权限功能 | 2d | 2011-12-15 | 2011-12-16 | 23 | 0d |  | 钟斌 | 16h |
| 25 | 1.3.2.1.3 | 用户信息管理 | 1d | 2011-12-19 | 2011-12-19 | 24 | 0d |  | 钟斌 | 8h |
| 26 | 1.3.2.2 | 单项目统计功能开发 | 4d | 2011-12-20 | 2011-12-23 | 22 | 1d | 0d | 张见喜 | 32h |
| 27 | 1.3.2.3 | 合同项目信息功能开发 | 2d | 2011-12-26 | 2011-12-27 | 26 | 1d | 0d | 张见喜 | 16h |
| 28 | 1.3.2.4 | 合同补充协议功能开发 | 2d | 2011-12-28 | 2011-12-29 | 27 | 1d |  | 张见喜 | 16h |
| 29 | 1.3.2.5 | 甲方开票功能开发 | 2d | 2011-12-20 | 2011-12-21 | 22 | 0d |  | 钟斌 | 16h |
| 30 | 1.3.2.6 | 客户开票功能开发 | 2d | 2011-12-22 | 2011-12-23 | 29 | 0d |  | 钟斌 | 16h |
| 31 | 1.3.2.7 | 收款情况开发 | 2d | 2011-12-26 | 2011-12-27 | 30 | 0d |  | 钟斌 | 16h |
| 32 | 1.3.2.8 | 付款情况功能开发 | 2d | 2011-12-28 | 2011-12-29 | 31 | 0d |  | 钟斌 | 16h |
| 33 | 1.3.2.9 | 结算参数设置 | 1d | 2011-12-30 | 2011-12-30 | 32 | 0d |  | 钟斌 | 8h |

| ID | WBS | Task | Type | Duration | Start | Finish | Predecessors | Total slack | Free slack | Resources | Work |
| --- | --- | --- | --- | --- | --- | --- | --- | --- | --- | --- | --- |
| 34 | 1.3.3 | **v2.0版本功能开发** |  | 9d | 2012-01-02 | 2012-01-12 | 21 | 0d |  |  | 152h |
| 35 | 1.3.3.1 | 型材功能开发 |  | 2d | 2012-01-02 | 2012-01-03 |  | 0d |  | 张见喜 | 16h |
| 36 | 1.3.3.2 | 往来欠款功能开发 |  | 3d | 2012-01-04 | 2012-01-06 | 35 | 0d |  | 张见喜 | 24h |
| 37 | 1.3.3.3 | 多项目汇总功能开发 |  | 4d | 2012-01-09 | 2012-01-12 | 36 | 0d |  | 张见喜 | 32h |
| 38 | 1.3.3.4 | 数据导出功能开发 |  | 2d | 2012-01-02 | 2012-01-03 |  | 3d | 0d | 钟斌 | 16h |
| 39 | 1.3.3.5 | 数据备份功能开发 |  | 2d | 2012-01-04 | 2012-01-05 | 38 | 3d | 0d | 钟斌 | 16h |
| 40 | 1.3.3.6 | 数据恢复功能开发 |  | 2d | 2012-01-06 | 2012-01-09 | 39 | 3d |  | 钟斌 | 16h |
| 41 | 1.3.3.7 | 系统打包安装功能开发 |  | 4d | 2012-01-02 | 2012-01-05 |  | 5d |  | 成七一 | 32h |
| 42 | 1.4 | **测试阶段** |  | 18d | 2012-01-02 | 2012-01-25 |  | 0d |  |  | 192h |
| 43 | 1.4.1 | **v1.0版本功能测试** |  | 10d | 2012-01-02 | 2012-01-13 | 21 | 8d |  |  | 104h |
| 44 | 1.4.1.1 | 发布v1.0版本功能 |  | 1d | 2012-01-02 | 2012-01-02 |  | 8d | 0d | 成七一 | 8h |
| 45 | 1.4.1.2 | 构建测试数据 |  | 2d | 2012-01-03 | 2012-01-04 | 44 | 8d | 0d | 成七一 | 16h |
| 46 | 1.4.1.3 | 功能测试 |  | 4d | 2012-01-05 | 2012-01-10 | 45 | 8d | 0d | 成七一 | 32h |
| 47 | 1.4.1.4 | 测试问题修改 |  | 3d | 2012-01-11 | 2012-01-13 | 46 | 8d |  | 钟斌; 张见喜 | 48h |
| 48 | 1.4.2 | **v2.0版本功能测试** |  | 7d | 2012-01-13 | 2012-01-23 | 34 | 0d |  |  | 72h |
| 49 | 1.4.2.1 | 发布v2.0版本功能 |  | 1d | 2012-01-13 | 2012-01-13 |  | 0d |  | 成七一 | 8h |
| 50 | 1.4.2.2 | 构建测试数据 |  | 1d | 2012-01-16 | 2012-01-16 | 49 | 0d |  | 成七一 | 8h |
| 51 | 1.4.2.3 | 功能测试 |  | 3d | 2012-01-17 | 2012-01-19 | 50 | 0d |  | 成七一 | 24h |
| 52 | 1.4.2.4 | 测试问题修改 |  | 2d | 2012-01-20 | 2012-01-23 | 51 | 0d |  | 钟斌; 张见喜 | 32h |
| 53 | 1.4.3 | 测试结果分析 |  | 1d | 2012-01-24 | 2012-01-24 | 48 | 0d |  | 成七一 | 8h |
| 54 | 1.4.4 | 测试结果确认 |  | 1d | 2012-01-25 | 2012-01-25 | 53 | 0d |  | 成七一 | 8h |
| 55 | 1.5 | **实施阶段** |  | 18d | 2012-01-25 | 2012-02-20 | 42 | 0d |  |  | 204h |
| 56 | 1.5.1 | 服务器就位(推荐配置：CPU主频在2.0GHz以上，内存在2GB以上，硬盘在100GB以上） | milestone | 0d | 2012-01-25 | 2012-01-25 |  | 0d |  |  |  |
| 57 | 1.5.2 | 现场部署安装 |  | 1d | 2012-01-26 | 2012-01-26 | 56 | 0d |  | 成七一 | 8h |
| 58 | 1.5.3 | 系统培训 |  | 1d | 2012-01-27 | 2012-01-27 | 57 | 0d |  | 成七一 | 8h |
| 59 | 1.5.4 | 系统试运行 |  | 15d | 2012-01-30 | 2012-02-17 | 58 | 0d |  | 成七一 [50%]; 张见喜 [50%]; 钟斌 [50%] | 180h |
| 60 | 1.5.5 | 系统验收 |  | 1d | 2012-02-20 | 2012-02-20 | 59 | 0d |  | 成七一 | 8h |
